# FF

Schedule from MS Project, 2020-12-15 to 2021-03-01.

## Calendars

- Standard: Mon-Fri 08:00-12:00, 13:00-17:00; Sat 08:00-17:00; Sun 08:00-09:00.

## Resources

| Resource |
| --- |
| Mixture Machine |
| Excavator |

## Schedule

| ID | WBS | Task | Duration | Start | Finish | Predecessors | Total slack | Free slack | Resources | Work |
| --- | --- | --- | --- | --- | --- | --- | --- | --- | --- | --- |
| 1 | 1 | **TYPE_A 724 to 935 total 211 meter** | 68d | 2020-12-15 | 2021-03-01 |  | 0d |  |  | 458h |
| 2 | 1.1 | Mobilization and Site Preparation | 7d | 2020-12-15 | 2020-12-22 |  | 0d |  |  |  |
| 3 | 1.2 | **Manufacturing CC Block** | 16d | 2020-12-22 | 2021-01-09 |  | 0d |  |  | 256h |
| 4 | 1.2.1 | CC Block Manufacture(40X40X40)-5012 Nos | 16d | 2020-12-22 | 2021-01-09 | 2 | 0d |  | Mixture Machine | 128h |
| 5 | 1.2.2 | CC Block Manufacture(40X40X20)-33338 Nos | 16d | 2020-12-22 | 2021-01-09 | 2 | 0d |  | Mixture Machine | 128h |
| 6 | 1.3 | Embankment Construction-6974 cum | 7d | 2020-12-22 | 2020-12-30 | 2 | 7d | 0d | Excavator [75%] | 42h |
| 7 | 1.4 | Placing Sand Filter-560 cum | 10d | 2020-12-30 | 2021-01-10 | 6 | 7d | 0d | Excavator | 80h |
| 8 | 1.5 | Placing Geotextile Filter-6098 sqm | 10d | 2021-01-11 | 2021-01-21 | 7 | 7d | 0d | Excavator | 80h |
| 9 | 1.6 | Placing Pea Gravel Filter-560 cum | 10d | 2021-01-21 | 2021-02-02 | 8 | 7d |  |  |  |
| 10 | 1.7 | Placing CC Block-1388 cum/38350 Nos | 10d | 2021-02-10 | 2021-02-20 | 9, 4FS+28d, 5FS+28d | 0d |  |  |  |
| 11 | 1.8 | Ancilary Work for Site Completion-1 LS | 7d | 2021-02-20 | 2021-03-01 | 10 | 0d |  |  |  |
