Schedule from MS Project, 2009-11-16 to 2010-05-03.
Microsoft

## Calendars

- Стандартный: Mon-Fri 09:00-13:00, 14:00-18:00; Sat-Sun off.

## Schedule

| ID | Task | Type | Duration | Start | Finish | Predecessors | Total slack |
| --- | --- | --- | --- | --- | --- | --- | --- |
| 1 | Land Lease |  | 7d | 2009-11-16 | 2009-11-24 |  | 0d |
| 2 | Labour Shed and Storage Construction | manual | 15d | 2009-11-25 | 2009-12-15 | 1 |  |
| 3 | Casting Yard Preparation | manual | 7d | 2009-11-25 | 2009-12-03 | 1 |  |
| 4 | Equipment and Labour Mobilization | manual | 7d | 2009-12-16 | 2009-12-24 | 2 |  |
| 5 | Material Consignment-1 | manual | 4d | 2009-12-16 | 2009-12-21 | 2 |  |
| 6 | CC Block Casting Batch No:1 | manual | 7d | 2009-12-22 | 2009-12-30 | 5 |  |
| 7 | CC Block Casting Batch No:2 | manual | 7d | 2009-12-31 | 2010-01-08 | 6 |  |
| 8 | Material Consignment-2 | manual | 4d | 2009-12-31 | 2010-01-05 | 6 |  |
| 9 | CC Block Casting Batch No:3 | manual | 7d | 2010-01-06 | 2010-01-14 | 8 |  |
| 10 | CC Block Casting Batch No:4 | manual | 7d | 2010-01-15 | 2010-01-25 | 9 |  |
| 11 | Material Consignment-3 | manual | 4d | 2010-01-15 | 2010-01-20 | 9 |  |
| 12 | CC Block Casting Batch No:5 | manual | 7d | 2010-01-21 | 2010-01-29 | 11 |  |
| 13 | CC Block Casting Batch No:6 | manual | 7d | 2010-02-01 | 2010-02-09 | 12 |  |
| 14 | Material Consignment-4 | manual | 4d | 2010-02-01 | 2010-02-04 | 12 |  |
| 15 | CC Block Casting Batch No:7 | manual | 7d | 2010-02-05 | 2010-02-15 | 14 |  |
| 16 | CC Block Casting Batch No:8 | manual | 7d | 2010-02-16 | 2010-02-24 | 15 |  |
| 17 | Material Consignment-5 | manual | 4d | 2010-02-16 | 2010-02-19 | 15 |  |
| 18 | CC Block Casting Batch No:9 | manual | 7d | 2010-02-22 | 2010-03-02 | 17 |  |
| 19 | CC Block Casting Batch No:10 | manual | 7d | 2010-03-03 | 2010-03-11 | 18 |  |
| 20 | Embakment Construction and Slope Prep | manual | 15d | 2010-02-05 | 2010-02-25 | 14 |  |
| 21 | Sand Filter | manual | 10d | 2010-02-26 | 2010-03-11 | 20 |  |
| 22 | Khoa Filter | manual | 10d | 2010-03-12 | 2010-03-25 | 21 |  |
| 23 | Geotextile Filtter | manual | 10d | 2010-03-26 | 2010-04-08 | 22 |  |
| 24 | CC Block Placing | manual | 10d | 2010-04-09 | 2010-04-22 | 23 |  |
| 25 | Demobilization and Site Cleanup | manual | 7d | 2010-04-23 | 2010-05-03 | 24 |  |
